# Software Development

Schedule from MS Project, 2018-10-01 to 2019-01-08.

## Calendars

- Standard: Mon-Fri 08:00-12:00, 13:00-17:00; Sat-Sun off.

## Resources

| Resource |
| --- |
| Management |
| Project Manager |
| Analyst |
| Developer |
| Testers |
| Trainers |
| Technical Communicators |
| Deployment Team |

## Schedule

| ID | WBS | Task | Type | Duration | Start | Finish | Predecessors | Total slack | Constraint | Resources | Work |
| --- | --- | --- | --- | --- | --- | --- | --- | --- | --- | --- | --- |
| 1 | 1 | **Scope** |  | 2d | 2018-10-01 | 2018-10-02 |  | 0d |  |  | 16h |
| 2 | 1.1 | Determine project scope |  | 1d | 2018-10-01 | 2018-10-01 |  | 0d |  | Management | 8h |
| 3 | 1.2 | Secure core resources |  | 1d | 2018-10-02 | 2018-10-02 | 2 | 0d |  | Project Manager | 8h |
| 4 | 1.3 | Scope complete | milestone | 0d | 2018-10-02 | 2018-10-02 | 3 | 0d |  |  |  |
| 5 | 2 | **Analysis/Software Requirements** |  | 5d | 2018-10-03 | 2018-10-09 |  | 0d |  |  | 40h |
| 6 | 2.1 | Conduct needs analysis |  | 2d | 2018-10-03 | 2018-10-04 | 4 | 0d |  | Analyst | 16h |
| 7 | 2.2 | Draft preliminary software specifications |  | 1d | 2018-10-05 | 2018-10-05 | 6 | 0d |  | Analyst | 8h |
| 8 | 2.3 | Incorporate feedback on software specifications |  | 1d | 2018-10-08 | 2018-10-08 | 7 | 0d |  | Analyst | 8h |
| 9 | 2.4 | Develop delivery timeline |  | 1d | 2018-10-09 | 2018-10-09 | 8 | 0d |  | Project Manager | 8h |
| 10 | 2.5 | Analysis complete | milestone | 0d | 2018-10-09 | 2018-10-09 | 9 | 0d |  |  |  |
| 11 | 3 | **Design** |  | 6d | 2018-10-10 | 2018-10-17 |  | 0d |  |  | 48h |
| 12 | 3.1 | Review preliminary software specifications |  | 1d | 2018-10-10 | 2018-10-10 | 10 | 0d |  | Analyst | 8h |
| 13 | 3.2 | Develop functional specifications |  | 2d | 2018-10-11 | 2018-10-12 | 12 | 0d |  | Analyst | 16h |
| 14 | 3.3 | Develop prototype based on functional specifications |  | 2d | 2018-10-15 | 2018-10-16 | 13 | 0d |  | Analyst | 16h |
| 15 | 3.4 | Review functional specifications |  | 1d | 2018-10-17 | 2018-10-17 | 14 | 0d |  | Management | 8h |
| 16 | 3.5 | Design complete | milestone | 0d | 2018-10-17 | 2018-10-17 | 15 | 0d |  |  |  |
| 17 | 4 | **Development** |  | 43d | 2018-10-18 | 2018-12-17 |  | 0d |  |  | 344h |
| 18 | 4.1 | Review functional specifications |  | 1d | 2018-10-18 | 2018-10-18 | 16 | 0d |  | Developer | 8h |
| 19 | 4.2 | Identify modular/tiered design parameters |  | 1d | 2018-10-19 | 2018-10-19 | 18 | 0d |  | Developer | 8h |
| 20 | 4.3 | Assign development staff |  | 1d | 2018-10-22 | 2018-10-22 | 19 | 0d |  | Developer | 8h |
| 21 | 4.4 | Develop code |  | 40d | 2018-10-23 | 2018-12-17 | 20 | 0d |  | Developer | 320h |
| 22 | 4.5 | Development complete | milestone | 0d | 2018-12-17 | 2018-12-17 | 21 | 0d |  |  |  |
| 23 | 5 | **Testing** |  | 11d | 2018-12-18 | 2019-01-01 |  | 0d |  |  | 88h |
| 24 | 5.1 | Develop unit test plans using product specifications |  | 1d | 2018-12-18 | 2018-12-18 | 22 | 0d |  | Testers | 8h |
| 25 | 5.2 | Develop integration test plans using product specifications |  | 1d | 2018-12-19 | 2018-12-19 | 24 | 0d | start no earlier than 2018-12-17 | Testers | 8h |

| ID | WBS | Task | Type | Duration | Start | Finish | Predecessors | Total slack | Resources | Work |
| --- | --- | --- | --- | --- | --- | --- | --- | --- | --- | --- |
| 26 | 5.3 | **Unit Testing** |  | 5d | 2018-12-20 | 2018-12-26 |  | 0d |  | 40h |
| 27 | 5.3.1 | Review modular code |  | 1d | 2018-12-20 | 2018-12-20 | 25 | 0d | Testers | 8h |
| 28 | 5.3.2 | Test component modules to product specifications |  | 1d | 2018-12-21 | 2018-12-21 | 27 | 0d | Testers | 8h |
| 29 | 5.3.3 | Identify anomalies to product specifications |  | 1d | 2018-12-24 | 2018-12-24 | 28 | 0d | Testers | 8h |
| 30 | 5.3.4 | Modify code |  | 1d | 2018-12-25 | 2018-12-25 | 29 | 0d | Testers | 8h |
| 31 | 5.3.5 | Re-test modified code |  | 1d | 2018-12-26 | 2018-12-26 | 30 | 0d | Testers | 8h |
| 32 | 5.3.6 | Unit testing complete | milestone | 0d | 2018-12-26 | 2018-12-26 | 31 | 0d |  |  |
| 33 | 5.4 | **Integration Testing** |  | 4d | 2018-12-27 | 2019-01-01 |  | 0d |  | 32h |
| 34 | 5.4.1 | Test module integration |  | 1d | 2018-12-27 | 2018-12-27 | 32 | 0d | Testers | 8h |
| 35 | 5.4.2 | Identify anomalies to specifications |  | 1d | 2018-12-28 | 2018-12-28 | 34 | 0d | Testers | 8h |
| 36 | 5.4.3 | Modify code |  | 1d | 2018-12-31 | 2018-12-31 | 35 | 0d | Testers | 8h |
| 37 | 5.4.4 | Re-test modified code |  | 1d | 2019-01-01 | 2019-01-01 | 36 | 0d | Testers | 8h |
| 38 | 5.4.5 | Integration testing complete | milestone | 0d | 2019-01-01 | 2019-01-01 | 37 | 0d |  |  |
| 39 | 6 | **Deployment** |  | 5d | 2019-01-02 | 2019-01-08 |  | 0d |  | 40h |
| 40 | 6.1 | Determine final deployment strategy |  | 1d | 2019-01-02 | 2019-01-02 | 38 | 0d | Deployment Team | 8h |
| 41 | 6.2 | Develop deployment methodology |  | 1d | 2019-01-03 | 2019-01-03 | 40 | 0d | Deployment Team | 8h |
| 42 | 6.3 | Secure deployment resources |  | 1d | 2019-01-04 | 2019-01-04 | 41 | 0d | Deployment Team | 8h |
| 43 | 6.4 | Train support staff |  | 1d | 2019-01-07 | 2019-01-07 | 42 | 0d | Deployment Team | 8h |
| 44 | 6.5 | Deploy software |  | 1d | 2019-01-08 | 2019-01-08 | 43 | 0d | Deployment Team | 8h |
| 45 | 6.6 | Deployment complete | milestone | 0d | 2019-01-08 | 2019-01-08 | 44 | 0d |  |  |
| 46 | 7 | Software development template complete | milestone | 0d | 2019-01-08 | 2019-01-08 | 45 | 0d |  |  |
